# Krisalida Gestion de Tareas

How a schedule from MS Project changed from version to version. A marks actual dates.

## Version 1 (saved 2025-01-09)

Note of the change: Costos de proyecto

| ID | WBS | Task | Duration | Start | Finish | Predecessors |
| --- | --- | --- | --- | --- | --- | --- |
| 1 |  | Ecommerce Krisalida | 88d | 2024-09-01 | 2024-12-31 |  |
| 2 | 2 | **Inicio del desarrollo. Establecer el ambiente de desarrollo** | 1d | 2024-09-02 | 2024-09-02 | 1 |
| 3 |  | Instalacion de herramientas de desarrollo. (git, visual studio code, node, mongodb, etc) | 1d | 2024-09-02 | 2024-09-02 |  |
| 4 | 3 | **Diseño de Base de Datos** | 5d | 2024-09-03 | 2024-09-09 | 2 |
| 5 |  | Diseño del modelo de datos | 4d | 2024-09-03 | 2024-09-06 |  |
| 6 |  | Creación de colecciones | 1d | 2024-09-09 | 2024-09-09 | 5 |
| 7 | 4 | **Conexiones** | 5d | 2024-09-10 | 2024-09-16 | 4 |
| 8 |  | Configuración de la conexión con el servidor de BD | 5d | 2024-09-10 | 2024-09-16 |  |
| 9 | 5 | **Desarrollo de APIs** | 5d | 2024-09-17 | 2024-09-23 | 7 |
| 10 |  | Creación de API para manejo de datos CRUD | 4d | 2024-09-17 | 2024-09-20 |  |
| 11 |  | Implementación de autenticación y autorización | 1d | 2024-09-23 | 2024-09-23 | 10 |
| 12 | 6 | **Pruebas** | 5d | 2024-09-17 | 2024-09-23 | 9 |
| 13 |  | Pruebas unitarias de funciones de la API | 1d | 2024-09-17 | 2024-09-17 |  |
| 14 |  | Pruebas de integración entre API y base de datos | 1d | 2024-09-18 | 2024-09-18 | 13 |
| 15 | 7 | **Diseño de Interfaz** | 5d | 2024-09-24 | 2024-09-30 | 12 |
| 16 |  | Creación de prototipos con herramientas de diseño | 2d | 2024-09-24 | 2024-09-25 |  |
| 17 |  | Implementación de layouts con React | 3d | 2024-09-26 | 2024-09-30 | 16 |
| 18 | 8 | **Desarrollo de Componentes** | 5d | 2024-10-01 | 2024-10-07 | 15 |
| 19 |  | Desarrollo de componentes básicos (botones, formularios, etc.) | 3d | 2024-10-01 | 2024-10-03 |  |
| 20 |  | Implementación de la navegación y enrutamiento | 1d | 2024-10-04 | 2024-10-04 | 19 |
| 21 |  | Integración de librerías de UI | 1d | 2024-10-07 | 2024-10-07 | 20 |
| 22 | 9 | **Integración con APIs** | 5d | 2024-10-08 | 2024-10-14 | 18 |
| 23 |  | Consumo de APIs para mostrar datos en la interfaz | 3d | 2024-10-08 | 2024-10-10 |  |
| 24 |  | Implementación de validaciones y manejo de errores | 2d | 2024-10-11 | 2024-10-12 | 23 |
| 25 |  | Pruebas de funcionalidad de interacción con las APIs | 1d | 2024-10-14 | 2024-10-14 | 24 |
| 26 | 10 | **Optimización** | 5d | 2024-10-15 | 2024-10-21 | 22 |
| 27 |  | Mejoras de responsividad | 5d | 2024-10-15 | 2024-10-21 |  |
| 28 | 11 | **Pruebas** | 5d | 2024-10-15 | 2024-10-21 | 26 |
| 29 |  | Pruebas de interfaz (UI testing, compatibilidad en diferentes navegadores) | 5d | 2024-10-15 | 2024-10-21 |  |
| 30 | 12 | **Diseño del Agente Inteligente** | 1d | 2024-10-23 | 2024-10-23 | 28 |
| 31 |  | Definición de requerimientos y funcionalidades del agente | 1d | 2024-10-23 | 2024-10-23 |  |
| 32 |  | Diseño de diálogos y flujos conversacionales | 0d | 2024-10-23 | 2024-10-23 | 31 |
| 33 | 13 | **Integración con OpenAI API** | 5d | 2024-10-24 | 2024-10-30 | 30 |
| 34 |  | Configuración de cuenta y acceso a OpenAI API | 2d | 2024-10-24 | 2024-10-25 |  |
| 35 |  | Implementación de la integración con la API de OpenAI | 2d | 2024-10-28 | 2024-10-29 | 34 |
| 36 |  | Pruebas iniciales de llamadas a la API | 1d | 2024-10-30 | 2024-10-30 | 35 |
| 37 | 14 | **Desarrollo de Lógica del Agente** | 7d | 2024-11-05 | 2024-11-13 | 33 |
| 38 |  | Implementación de procesamiento de lenguaje natural | 3d | 2024-11-05 | 2024-11-07 |  |
| 39 |  | Definición de estrategias de respuesta y comportamiento del agente | 1d | 2024-11-08 | 2024-11-08 | 38 |
| 40 |  | Manejo de contexto y memoria conversacional | 3d | 2024-11-11 | 2024-11-13 | 39 |
| 41 | 15 | **Entrenamiento y Ajustes** | 5d | 2024-11-14 | 2024-11-20 | 37 |
| 42 |  | Ajuste de prompts y parámetros de la API para optimizar el desempeño | 3d | 2024-11-14 | 2024-11-16 |  |
| 43 |  | Revisión de casos de uso y respuestas para mejorar precisión y relevancia | 3d | 2024-11-18 | 2024-11-20 | 42 |
| 44 | 16 | **Implementación** | 5d | 2024-11-21 | 2024-11-27 | 41 |
| 45 |  | Despliegue del agente en el entorno de desarrollo | 2d | 2024-11-21 | 2024-11-22 |  |
| 46 |  | Integración con interfaces de usuario | 3d | 2024-11-25 | 2024-11-27 | 45 |
| 47 | 17 | **Pruebas y Optimización** | 12d | 2024-11-28 | 2024-12-13 | 44 |
| 48 |  | Pruebas de interacción con usuarios | 7d | 2024-11-28 | 2024-12-06 |  |
| 49 |  | Optimización de respuestas basadas en feedback | 5d | 2024-12-09 | 2024-12-13 | 48 |

## Version 2 (saved 2025-01-15)

Note of the change: Project

Last finish 2024-12-31 → 2025-01-31 (+31d). Complete tasks 0 → 29.

Removed: 32 Diseño de diálogos y flujos conversacionales; 39 Definición de estrategias de respuesta y comportamiento del agente

Changed:

| ID | Task | Start | Finish | Duration | Complete | Predecessors | Other |
| --- | --- | --- | --- | --- | --- | --- | --- |
| 1 | Ecommerce Krisalida | 2024-09-01 A | 2024-12-31 A | 88d → 234.67d | 0% → 100% |  |  |
| 2 | **Inicio del desarrollo. Establecer el ambiente de desarrollo** | 2024-09-02 A | 2024-09-02 A | 1d → 2.67d | 0% → 100% |  |  |
| 3 | Instalacion de herramientas de desarrollo. (git, visual studio code, node, mongodb, etc) | 2024-09-02 A | 2024-09-02 A | 1d → 2.67d | 0% → 100% |  |  |
| 4 | **Diseño de Base de Datos** | 2024-09-03 A | 2024-09-09 A | 5d → 13.33d | 0% → 100% |  |  |
| 5 | Diseño del modelo de datos | 2024-09-03 A | 2024-09-06 A | 4d → 10.67d | 0% → 100% |  |  |
| 6 | Creación de colecciones | 2024-09-09 A | 2024-09-09 A | 1d → 2.67d | 0% → 100% |  |  |
| 7 | **Conexiones** | 2024-09-10 A | 2024-09-16 A | 5d → 13.33d | 0% → 100% |  |  |
| 8 | Configuración de la conexión con el servidor de BD | 2024-09-10 A | 2024-09-16 A | 5d → 13.33d | 0% → 100% |  |  |
| 9 | **Desarrollo de APIs** | 2024-09-17 A | 2024-09-23 A | 5d → 13.33d | 0% → 100% |  |  |
| 10 | Creación de API para manejo de datos CRUD | 2024-09-17 A | 2024-09-20 A | 4d → 10.67d | 0% → 100% |  |  |
| 11 | Implementación de autenticación y autorización | 2024-09-23 A | 2024-09-23 A | 1d → 2.67d | 0% → 100% |  |  |
| 12 | **Pruebas** | 2024-09-17 A |  | 5d → 13.33d | 0% → 100% |  |  |
| 13 | Pruebas unitarias de funciones de la API | 2024-09-17 A | 2024-09-17 A | 1d → 2.67d | 0% → 100% |  |  |
| 14 | Pruebas de integración entre API y base de datos | 2024-09-18 A | 2024-09-18 A | 1d → 2.67d | 0% → 100% |  |  |
| 15 | **Diseño de Interfaz** | 2024-09-24 A | 2024-09-30 A | 5d → 13.33d | 0% → 100% |  |  |
| 16 | Creación de prototipos con herramientas de diseño | 2024-09-24 A | 2024-09-25 A | 2d → 5.33d | 0% → 100% |  |  |
| 17 | Implementación de layouts con React | 2024-09-26 A | 2024-09-30 A | 3d → 8d | 0% → 100% |  |  |
| 18 | **Desarrollo de Componentes** | 2024-10-01 A | 2024-10-07 A | 5d → 13.33d | 0% → 100% |  |  |
| 19 | Desarrollo de componentes básicos (botones, formularios, etc.) | 2024-10-01 A | 2024-10-03 A | 3d → 8d | 0% → 100% |  |  |
| 20 | Implementación de la navegación y enrutamiento | 2024-10-04 A | 2024-10-04 A | 1d → 2.67d | 0% → 100% |  |  |
| 21 | Integración de librerías de UI | 2024-10-07 A | 2024-10-07 A | 1d → 2.67d | 0% → 100% |  |  |
| 22 | **Integración con APIs** | 2024-10-08 A | 2024-10-14 A | 5d → 13.33d | 0% → 100% |  |  |
| 23 | Consumo de APIs para mostrar datos en la interfaz | 2024-10-08 A | 2024-10-10 A | 3d → 8d | 0% → 100% |  |  |
| 24 | Implementación de validaciones y manejo de errores | 2024-10-11 A | 2024-10-12 A | 2d → 5.33d | 0% → 100% |  |  |
| 25 | Pruebas de funcionalidad de interacción con las APIs | 2024-10-14 A | 2024-10-14 A | 1d → 2.67d | 0% → 100% |  |  |
| 26 | **Optimización** | 2024-10-15 A | 2024-10-21 A | 5d → 13.33d | 0% → 100% |  |  |
| 27 | Mejoras de responsividad | 2024-10-15 A | 2024-10-21 A | 5d → 13.33d | 0% → 100% |  |  |
| 28 | **Pruebas** | 2024-10-15 A | 2024-10-21 A | 5d → 13.33d | 0% → 100% |  |  |
| 29 | Pruebas de interfaz (UI testing, compatibilidad en diferentes navegadores) | 2024-10-15 A | 2024-10-21 A | 5d → 13.33d | 0% → 100% |  | resources none → Tester |
| 30 | **Diseño del Agente Inteligente** | 2024-10-23 A | 2024-10-23 A | 1d → 2.67d | 0% → 100% |  |  |
| 31 | Definición de requerimientos y funcionalidades del agente | 2024-10-23 A | 2024-10-23 A | 1d → 2.67d | 0% → 100% |  | resources none → Desarrollador: Kevin Suntaxi |
| 32 | **Integración con OpenAI API** | 2024-10-24 A | 2024-10-30 A | 5d → 13.33d | 0% → 100% |  |  |
| 33 | Configuración de cuenta y acceso a OpenAI API | 2024-10-24 A | 2024-10-25 A | 2d → 5.33d | 0% → 100% |  | resources none → Desarrollador: Kevin Suntaxi |
| 34 | Implementación de la integración con la API de OpenAI | 2024-10-28 A | 2024-10-29 A | 2d → 5.33d | 0% → 100% |  | resources none → Desarrollador: Kevin Suntaxi |
| 35 | Pruebas iniciales de llamadas a la API | 2024-10-30 A | 2024-10-30 A | 1d → 2.67d | 0% → 100% |  | resources none → Tester |
| 36 | **Desarrollo de Lógica del Agente** | 2024-11-05 → 2025-01-01 A (+57d) | 2024-11-13 → 2025-01-10 (+58d) | 7d → 21.33d | 0% → 86% |  |  |
| 37 | Implementación de procesamiento de lenguaje natural | 2024-11-05 → 2025-01-01 A (+57d) | 2024-11-07 → 2025-01-03 A (+57d) | 3d → 8d | 0% → 100% |  | resources none → Desarrollador: Christian Andrango |
| 38 | Manejo de contexto y memoria conversacional | 2024-11-11 → 2025-01-07 A (+57d) | 2024-11-13 → 2025-01-10 (+58d) | 3d → 10.67d | 0% → 75% | Definición de estrategias de respuesta y comportamiento del agente → none | resources none → Desarrollador: Christian Andrango |
| 39 | **Entrenamiento y Ajustes** | 2024-11-14 → 2025-01-13 (+60d) | 2024-11-20 → 2025-01-17 A (+58d) | 5d → 13.33d | 0% → 100% |  |  |
| 40 | Ajuste de prompts y parámetros de la API para optimizar el desempeño | 2024-11-14 → 2025-01-14 A (+61d) | 2024-11-16 → 2025-01-15 A (+60d) | 3d → 5.33d | 0% → 100% |  | resources none → Desarrollador: Kevin Suntaxi |
| 41 | Revisión de casos de uso y respuestas para mejorar precisión y relevancia | 2024-11-18 → 2025-01-16 A (+59d) | 2024-11-20 → 2025-01-17 A (+58d) | 3d → 5.33d | 0% → 100% |  | resources none → Desarrollador: Kevin Suntaxi; Desarrollador: Christian Andrango |
| 42 | **Implementación** | 2024-11-21 → 2025-01-20 A (+60d) | 2024-11-27 → 2025-01-24 (+58d) | 5d → 13.33d | 0% → 100% |  |  |
| 43 | Despliegue del agente en el entorno de desarrollo | 2024-11-21 → 2025-01-20 A (+60d) | 2024-11-22 → 2025-01-21 A (+60d) | 2d → 5.33d | 0% → 100% |  | resources none → Desarrollador: Christian Andrango; Desarrollador: Kevin Suntaxi |
| 44 | Integración con interfaces de usuario | 2024-11-25 → 2025-01-22 A (+58d) | 2024-11-27 → 2025-01-23 A (+57d) | 3d → 5.33d | 0% → 100% |  | resources none → Desarrollador: Christian Andrango |
| 45 | **Pruebas y Optimización** | 2024-11-28 → 2025-01-27 A (+60d) | 2024-12-13 → 2025-01-31 (+49d) | 12d → 13.33d | 0% → 80% |  |  |
| 46 | Pruebas de interacción con usuarios | 2024-11-28 → 2025-01-27 A (+60d) | 2024-12-06 → 2025-01-28 A (+53d) | 7d → 5.33d | 0% → 100% |  | resources none → Tester |
| 47 | Optimización de respuestas basadas en feedback | 2024-12-09 → 2025-01-29 A (+51d) | 2024-12-13 → 2025-01-31 (+49d) | 5d → 8d | 0% → 67% |  | resources none → Desarrollador: Christian Andrango |
